# CTRP2-ProjectSchedule

Schedule from MS Project, 2011-08-10 to 2012-09-24, A marks actual dates.

## Calendars

- Standard: Mon-Fri 08:00-12:00, 13:00-17:00; Sat-Sun off.

## Resources

| Resource |
| --- |
| Bala |
| Smita |
| Nelli |
| Paula |
| Hugh |
| Steve Matyas |
| Todd |
| Steve L |
| Sohal |
| Harsha |
| Naveen |
| BDA Team |
| Systems Team |
| QA3 |
| QA4 |
| QA5 |
| Vrushali |
| Max |
| VCDE |
| Anu |
| rushali |
| CTEP |
| caXchange |
| C3PR |
| caAERS |
| PSC |
| LV |
| BDA |
| "C3PR |
| Documentation |
| caGrid |
| QA |
| BAM |
| Edmond |
| NCI |
| SAIC-F |
| Web Team |
| Bill Dyer |
| CCTS Team |
| John S |
| Patrick |
| Architects |
| Christo |
| John |
| Rhett |
| Nellie |
| Steve |
| Kalpesh |
| David L |
| Stevel L |
| Kumar C |
| Gia |
| Wendy |
| Raj |
| Steve M |
| Lauren |
| Systems |
| CTRO |
| Hannes |
| SMEs |
| Gisele |
| Joe |
| CTRP Dev team |
| CBIIT |
| All |
| Analysts |
| TBD |
| Charles |
| ESST |
| Developers |
| Lisa |
| Christophe |
| Krishna |
| QA1 |
| QA2 |
| David |
| Security |
| Arch |
| Tech Leads |
| Paula B |
| Kalpana |
| KK |
| Abe |
| Kim |
| Vijay |
| CAT |
| George |
| Larry |
| Michael O |
| Resource 1 |
| Resource 2 |
| Resource3 |
| Resource 4 |
| Resource 5 |
| Gisele S |
| Dianne R |
| HR |
| NA |
| SL |
| ScenPro |
| 5AM |
| TP |
| EM |
| KE |
| JM |
| DL |
| Paul |
| Michael |
| Eilis |
| Team |
| Dev team |
| Ram P |
| NIH 508 team |
| Bryan |
| Bill D |
| Quy |
| Andrew |
| Rashmi |

## Schedule

| ID | WBS | Task | Type | Duration | Start | Finish | Predecessors | Complete | Remaining | Total slack | Free slack | Constraint | Resources | Work | Actual work |
| --- | --- | --- | --- | --- | --- | --- | --- | --- | --- | --- | --- | --- | --- | --- | --- |
| 1 | 1 | **CAARRAY 2.x** |  | 294d | 2011-08-10 A | 2012-09-24 |  | 47% | 156.63d | 0d |  | start no earlier than 2011-08-03 |  | 7368h | 97.53h |
| 2 | 1.1 | **2.4.1** |  | 38d | 2011-08-10 A | 2011-09-30 |  | 96% | 1.38d | 256d |  | start no earlier than 2011-08-10 |  | 912h | 4.8h |
| 3 | 1.1.1 | **2.4.1 RC6** |  | 25d | 2011-08-10 A | 2011-09-13 |  | 99% | 0d | 0d |  |  | Andrew; Quy; Rashmi | 600h |  |
| 4 | 1.1.1.1 | caArray Importer: Regression test on local tier |  | 20d | 2011-08-10 A | 2011-09-06 A |  | 100% |  |  |  |  |  |  |  |
| 5 | 1.1.1.2 | caArray Importer: Test import on local tier |  | 20d | 2011-08-10 A | 2011-09-06 A |  | 100% |  |  |  |  |  |  |  |
| 6 | 1.1.1.3 | API Partner Testing on STAGE |  | 20d | 2011-08-10 A | 2011-09-06 A |  | 100% |  |  |  |  |  |  |  |
| 7 | 1.1.1.4 | Section 508 compliance: Run scan and issue-manage. |  | 20d | 2011-08-10 A | 2011-09-06 A |  | 100% |  |  |  |  |  |  |  |
| 8 | 1.1.1.5 | Write Grid client to get expt and hyb counts for Ken Buetow |  | 20d | 2011-08-10 A | 2011-09-06 A |  | 100% |  |  |  |  |  |  |  |
| 9 | 1.1.1.6 | Write and test QTP automated script to load TCGA data |  | 20d | 2011-08-10 A | 2011-09-06 A |  | 100% |  |  |  |  |  |  |  |
| 10 | 1.1.1.7 | Bug fix for ARRAY-2059 that is a blocker for the TCGA data load |  | 20d | 2011-08-10 A | 2011-09-06 A |  | 100% |  |  |  |  |  |  |  |
| 11 | 1.1.1.8 | Section 508 compliance: Fix ARRAY-1911 to get 90% score |  | 20d | 2011-08-10 A | 2011-09-06 A |  | 100% |  |  |  |  |  |  |  |
| 12 | 1.1.1.9 | Decide on solution to TCGA data load issue |  | 20d | 2011-08-10 A | 2011-09-06 A |  | 100% |  |  |  |  |  |  |  |
| 13 | 1.1.1.10 | Bug fix for ARRAY-2055 |  | 20d | 2011-08-10 A | 2011-09-06 A |  | 100% |  |  |  |  |  |  |  |
| 14 | 1.1.1.11 | Temporary bug fix for ARRAY-2053 |  | 25d | 2011-08-10 A | 2011-09-13 A |  | 100% |  |  |  |  |  |  |  |
| 15 | 1.1.1.12 | Test bug fixes on QA tier |  | 25d | 2011-08-10 A | 2011-09-13 A |  | 100% |  |  |  |  |  |  |  |
| 16 | 1.1.2 | **2.4.1 Deployment** |  | 13d | 2011-09-14 A | 2011-09-30 | 3 | 62% | 5d | 256d |  |  | Rashmi; Andrew; Quy | 312h | 4.8h |
| 17 | 1.1.2.1 | Regression testing on QA tier |  | 5d | 2011-09-14 A | 2011-09-20 A |  | 100% |  |  |  |  |  |  |  |
| 18 | 1.1.2.2 | Test bug fixes on STAGE |  | 5d | 2011-09-14 A | 2011-09-20 |  | 80% | 1d | 264d |  |  |  |  |  |
| 19 | 1.1.2.3 | Regression testing on STAGE |  | 5d | 2011-09-21 A | 2011-09-27 | 17 | 80% | 1d | 259d |  |  |  |  |  |
| 20 | 1.1.2.4 | Upload Release Artifacts |  | 2d | 2011-09-21 A | 2011-09-22 A | 17 | 100% |  |  |  |  |  |  |  |
| 21 | 1.1.2.5 | App Scan on STAGE |  | 3d | 2011-09-21 | 2011-09-23 | 17 |  |  | 247d | 0d |  |  |  |  |
| 22 | 1.1.2.6 | Add README_caArray_and_UPT.txt |  | 1d | 2011-09-26 | 2011-09-26 | 21 |  |  | 256d | 0d |  |  |  |  |
| 23 | 1.1.2.7 | Deploy to PRODUCTION |  | 5d | 2011-09-26 A | 2011-09-30 | 22 | 20% | 4d | 256d | 0d |  |  |  |  |
| 24 | 1.2 | RELEASE 2.4.1 | milestone | 0d | 2011-09-30 | 2011-09-30 | 23 |  |  | 256d |  |  |  |  |  |

| ID | WBS | Task | Type | Duration | Start | Finish | Predecessors | Complete | Remaining | Total slack | Resources | Work | Actual work |
| --- | --- | --- | --- | --- | --- | --- | --- | --- | --- | --- | --- | --- | --- |
| 25 | 1.3 | **2.5.0 (rough LOEs)** |  | 119d | 2011-09-14 A | 2012-02-27 | 3 | 3% | 115.14d | 0d | Andrew; Quy; Rashmi | 2856h | 92.72h |
| 26 | 1.3.1 | Migrate from Ivy to Nexus |  | 5d | 2011-09-14 A | 2011-09-20 |  | 50% | 2.5d | 12d |  |  |  |
| 27 | 1.3.2 | Merge in plug-in arch, file system storage, Jboss5 and get local CI build working |  | 10d | 2011-09-14 A | 2011-09-27 |  | 25% | 7.5d | 0d |  |  |  |
| 28 | 1.3.3 | Artifact configuration at build time for BDA-Lite and PTE form |  | 7d | 2011-09-28 | 2011-10-06 | 27 |  |  | 0d |  |  |  |
| 29 | 1.3.4 | Migrate to AntHill Pro 3 |  | 2d | 2011-10-07 | 2011-10-10 | 26, 28 |  |  | 0d |  |  |  |
| 30 | 1.3.5 | Merge in 2.4.1 fixes into 2.5.0 |  | 5d | 2011-09-28 | 2011-10-04 | 27 |  |  | 104d |  |  |  |
| 31 | 1.3.6 | Get Hudson/Jenkins CI build working |  | 5d | 2011-09-28 | 2011-10-04 | 27 |  |  | 104d |  |  |  |
| 32 | 1.3.7 | Jboss 5.1 / Java 6 upgrade - NCI tiers |  | 5d | 2011-10-11 | 2011-10-17 | 29 |  |  | 95d |  |  |  |
| 33 | 1.3.8 | Jboss 5.1 Java 6 upgrade - Test local installer |  | 5d | 2011-10-11 | 2011-10-17 | 29 |  |  | 95d |  |  |  |
| 34 | 1.3.9 | Jboss 5.1 / Java 6 upgrade - Upgrade Installer |  | 5d | 2011-10-11 | 2011-10-17 | 29 |  |  | 0d |  |  |  |
| 35 | 1.3.10 | File system storage of raw files (transaction spanning DB and filesystem) |  | 5d | 2011-10-18 | 2011-10-24 | 34 |  |  | 90d |  |  |  |
| 36 | 1.3.11 | Allow user to point to files rather than uploading/transferring |  | 5d | 2011-10-18 | 2011-10-24 | 34 |  |  | 0d |  |  |  |
| 37 | 1.3.12 | Split imports into multiple transactions |  | 30d | 2011-10-25 | 2011-12-05 | 36 |  |  | 0d |  |  |  |
| 38 | 1.3.13 | Resumable uploads/downloads |  | 20d | 2011-12-06 | 2012-01-02 | 37 |  |  | 0d |  |  |  |
| 39 | 1.3.14 | Backup and replication for file system - NCI tiers and local installer documentation |  | 5d | 2012-01-03 | 2012-01-09 | 38 |  |  | 35d |  |  |  |
| 40 | 1.3.15 | API (CQL) changes to account for file system storage |  | 5d | 2012-01-03 | 2012-01-09 | 38 |  |  | 0d |  |  |  |
| 41 | 1.3.16 | Bug fixes |  | 25d | 2012-01-10 | 2012-02-13 | 40 |  |  | 0d |  |  |  |
| 42 | 1.3.17 | Deployment overhead |  | 10d | 2012-02-14 | 2012-02-27 | 41 |  |  | 0d |  |  |  |
| 43 | 1.4 | **PRODUCT BACKLOG (rough LOEs)** |  | 150d | 2012-02-28 | 2012-09-24 | 25 |  |  | 0d | Andrew; Quy; Rashmi | 3600h |  |
| 44 | 1.4.1 | **Grid Security (TRANSCEND)** |  | 40d | 2012-02-28 | 2012-04-23 |  |  |  | 0d |  |  |  |
| 45 | 1.4.1.1 | ARRAY-1463 - Login with caGrid account |  | 10d | 2012-02-28 | 2012-03-12 |  |  |  | 0d |  |  |  |
| 46 | 1.4.1.2 | ARRAY-1928 - Migrate CSM to Grid accounts |  | 5d | 2012-03-13 | 2012-03-19 | 45 |  |  | 0d |  |  |  |
| 47 | 1.4.1.3 | ARRAY-1353 - Grid authentication in remote Java API |  | 10d | 2012-03-20 | 2012-04-02 | 46 |  |  | 0d |  |  |  |
| 48 | 1.4.1.4 | ARRAY-1462 - Installer/build infrastructure for secure Grid |  | 15d | 2012-04-03 | 2012-04-23 | 47 |  |  | 0d |  |  |  |
| 49 | 1.4.1.5 | ARRAY-1929 - Grid Grouper | milestone | 0d | 2012-04-23 | 2012-04-23 | 48 |  |  | 0d |  |  |  |
| 50 | 1.4.1.6 | ARRAY-1472 - Bulk migration of LDAP to Grid | milestone | 0d | 2012-04-23 | 2012-04-23 | 49 |  |  | 0d |  |  |  |

| ID | WBS | Task | Type | Duration | Start | Finish | Predecessors | Total slack |
| --- | --- | --- | --- | --- | --- | --- | --- | --- |
| 51 | 1.4.2 | **Single Sign-on (TRANSCEND)** |  | 20d | 2012-04-24 | 2012-05-21 | 44 | 0d |
| 52 | 1.4.2.1 | ARRAY-1930 |  | 20d | 2012-04-24 | 2012-05-21 |  | 0d |
| 53 | 1.4.3 | **Audit Trail (TRANSCEND)** |  | 20d | 2012-05-22 | 2012-06-18 | 51 | 0d |
| 54 | 1.4.3.1 | ARRAY-1931 - Sample deletions and data imports |  | 10d | 2012-05-22 | 2012-06-04 |  | 0d |
| 55 | 1.4.3.2 | ARRAY-1933 - Log visibility to Data Owner |  | 5d | 2012-06-05 | 2012-06-11 | 54 | 0d |
| 56 | 1.4.3.3 | ARRAY-1932 - Publish log |  | 5d | 2012-06-12 | 2012-06-18 | 55 | 0d |
| 57 | 1.4.4 | **File-level permissions for role-based security (TRANSCEND)** |  | 20d | 2012-06-19 | 2012-07-16 | 53 | 0d |
| 58 | 1.4.4.1 | ARRAY-1938 |  | 20d | 2012-06-19 | 2012-07-16 |  | 0d |
| 59 | 1.4.5 | **Maintenance and Bug Fixes** |  | 10d | 2012-07-17 | 2012-07-30 | 57 | 0d |
| 60 | 1.4.5.1 | Collaborator Group Defect |  | 10d | 2012-07-17 | 2012-07-30 |  | 0d |
| 61 | 1.4.5.2 | Expand unparsed file types | milestone | 0d | 2012-07-30 | 2012-07-30 | 60 | 0d |
| 62 | 1.4.5.3 | IE 8 UI bugs | milestone | 0d | 2012-07-30 | 2012-07-30 | 61 | 0d |
| 63 | 1.4.5.4 | MAGE-TAB v1.1 support | milestone | 0d | 2012-07-30 | 2012-07-30 | 62 | 0d |
| 64 | 1.4.5.5 | Clean up duplicate terms | milestone | 0d | 2012-07-30 | 2012-07-30 | 63 | 0d |
| 65 | 1.4.5.6 | Import verification to prevent unintentional biomaterial/term creation | milestone | 0d | 2012-07-30 | 2012-07-30 | 64 | 0d |
| 66 | 1.4.5.7 | Prevent multiple hybs to 1 file association | milestone | 0d | 2012-07-30 | 2012-07-30 | 65 | 0d |
| 67 | 1.4.5.8 | Fix SDRF export of multiple derived data file columns | milestone | 0d | 2012-07-30 | 2012-07-30 | 66 | 0d |
| 68 | 1.4.5.9 | Fix LSIDs for unparsed array designs | milestone | 0d | 2012-07-30 | 2012-07-30 | 67 | 0d |
| 69 | 1.4.6 | **Release Overhead** |  | 40d | 2012-07-31 | 2012-09-24 | 59 | 0d |
| 70 | 1.4.6.1 | Bug fixes |  | 30d | 2012-07-31 | 2012-09-10 |  | 0d |
| 71 | 1.4.6.2 | Deployment overhead |  | 10d | 2012-09-11 | 2012-09-24 | 70 | 0d |
